# 直接成本估算

Schedule from MS Project, 2020-02-25 to 2020-06-02, costs in ¥.

## Calendars

- 标准: Mon-Fri 08:00-12:00, 13:00-17:00; Sat-Sun off.

## Resources

| Resource |
| --- |
| 于旭东 |
| 郑尚姿 |
| 王予诺 |
| 杨迪 |
| 范钰敏 |
| 程序员1 |
| 程序员2 |
| 程序员3 |
| 设计专家 |
| 间接成本 |
| 储备 |

## Schedule

| ID | WBS | Task | Type | Duration | Start | Finish | Predecessors | Resources | Work | Cost |
| --- | --- | --- | --- | --- | --- | --- | --- | --- | --- | --- |
| 1 | 1 | **启动** |  | 5d | 2020-02-25 | 2020-03-02 |  | 间接成本 [0.1%]; 储备 [0.1%] | 104h | 10,280 |
| 2 | 1.1 | 组建核心团队 | manual | 1d | 2020-02-25 | 2020-02-25 |  | 于旭东; 王予诺; 设计专家; 郑尚姿; 杨迪 | 40h | 3,200 |
| 3 | 1.2 | 干系人分析 | manual | 1d | 2020-02-26 | 2020-02-26 |  | 于旭东 | 8h | 960 |
| 4 | 1.3 | 里程碑计划 | manual | 1d | 2020-02-27 | 2020-02-27 |  | 于旭东 | 8h | 960 |
| 5 | 1.4 | 制定项目章程 | manual | 1d | 2020-02-28 | 2020-02-28 | 2, 3, 4 | 于旭东 | 8h | 960 |
| 6 | 1.5 | 项目启动大会 | manual | 1d | 2020-03-02 | 2020-03-02 | 5 | 王予诺; 设计专家; 于旭东; 郑尚姿; 杨迪 | 40h | 3,200 |
| 7 | 2 | **规划** |  | 24d | 2020-03-03 | 2020-04-03 |  | 间接成本 [0.1%]; 储备 [0.1%] | 200h | 24,920 |
| 8 | 2.1 | **规划范围** |  | 4d | 2020-03-03 | 2020-03-06 |  |  | 48h | 4,640 |
| 9 | 2.1.1 | 制定需求说明书 | manual | 1d | 2020-03-03 | 2020-03-03 | 6 | 郑尚姿 | 8h | 640 |
| 10 | 2.1.2 | 界面设计 | manual | 1d | 2020-03-04 | 2020-03-04 | 9 | 王予诺 | 8h | 480 |
| 11 | 2.1.3 | 详细设计说明书 | manual | 1d | 2020-03-04 | 2020-03-04 | 9 | 设计专家 | 8h | 640 |
| 12 | 2.1.4 | 范围说明书 | manual | 1d | 2020-03-04 | 2020-03-04 | 9 | 于旭东 | 8h | 960 |
| 13 | 2.1.5 | 创建WBS | manual | 1d | 2020-03-05 | 2020-03-05 | 10, 11, 12 | 于旭东 | 8h | 960 |
| 14 | 2.1.6 | 形成范围基准 | manual | 1d | 2020-03-06 | 2020-03-06 | 13 | 于旭东 | 8h | 960 |
| 15 | 2.2 | **规划时间** |  | 5d | 2020-03-09 | 2020-03-13 |  |  | 40h | 4,800 |
| 16 | 2.2.1 | 排列工作包顺序 | manual | 1d | 2020-03-09 | 2020-03-09 | 14 | 于旭东 | 8h | 960 |
| 17 | 2.2.2 | 估算资源 | manual | 1d | 2020-03-10 | 2020-03-10 | 16 | 于旭东 | 8h | 960 |
| 18 | 2.2.3 | 估算持续时间 | manual | 1d | 2020-03-11 | 2020-03-11 | 17 | 于旭东 | 8h | 960 |
| 19 | 2.2.4 | 制定进度计划 | manual | 1d | 2020-03-12 | 2020-03-12 | 18 | 于旭东 | 8h | 960 |
| 20 | 2.2.5 | 形成进度基准 | manual | 1d | 2020-03-13 | 2020-03-13 | 19 | 于旭东 | 8h | 960 |
| 21 | 2.3 | **规划成本** |  | 3d | 2020-03-16 | 2020-03-18 |  |  | 24h | 2,880 |
| 22 | 2.3.1 | 项目成本估算 | manual | 1d | 2020-03-16 | 2020-03-16 | 20 | 于旭东 | 8h | 960 |
| 23 | 2.3.2 | 项目预算 | manual | 1d | 2020-03-17 | 2020-03-17 | 22 | 于旭东 | 8h | 960 |
| 24 | 2.3.3 | 形成范围基准 | manual | 1d | 2020-03-18 | 2020-03-18 | 23 | 于旭东 | 8h | 960 |

| ID | WBS | Task | Type | Duration | Start | Finish | Predecessors | Resources | Work | Cost |
| --- | --- | --- | --- | --- | --- | --- | --- | --- | --- | --- |
| 25 | 2.4 | **规划质量** |  | 2d | 2020-03-19 | 2020-03-20 |  |  | 16h | 960 |
| 26 | 2.4.1 | 制定测试计划 | manual | 1d | 2020-03-19 | 2020-03-19 | 14 | 杨迪 | 8h | 480 |
| 27 | 2.4.2 | 制定测试用例 | manual | 1d | 2020-03-20 | 2020-03-20 | 26 | 杨迪 | 8h | 480 |
| 28 | 2.5 | **规划人力资源** |  | 2d | 2020-03-23 | 2020-03-24 |  |  | 16h | 1,920 |
| 29 | 2.5.1 | 制定人力资源计划 | manual | 1d | 2020-03-23 | 2020-03-23 | 17 | 于旭东 | 8h | 960 |
| 30 | 2.5.2 | 制定人员配备管理计划 | manual | 1d | 2020-03-24 | 2020-03-24 | 29 | 于旭东 | 8h | 960 |
| 31 | 2.6 | **规划沟通** |  | 1d | 2020-03-25 | 2020-03-25 |  |  | 8h | 960 |
| 32 | 2.6.1 | 制定沟通管理计划 | manual | 1d | 2020-03-25 | 2020-03-25 | 30 | 于旭东 | 8h | 960 |
| 33 | 2.7 | **规划采购** |  | 2d | 2020-03-26 | 2020-03-27 |  |  | 16h | 1,920 |
| 34 | 2.7.1 | 自制外购分析 | manual | 1d | 2020-03-26 | 2020-03-26 | 17 | 于旭东 | 8h | 960 |
| 35 | 2.7.2 | 制定采购文件 | manual | 1d | 2020-03-27 | 2020-03-27 | 34 | 于旭东 | 8h | 960 |
| 36 | 2.8 | **规划风险** |  | 5d | 2020-03-30 | 2020-04-03 |  |  | 24h | 2,880 |
| 37 | 2.8.1 | 识别风险 | manual | 1d | 2020-03-30 | 2020-03-30 | 15, 21, 25, 28 | 于旭东 | 8h | 960 |
| 38 | 2.8.2 | 风险分析 | manual | 1d | 2020-03-31 | 2020-03-31 | 37 | 于旭东 | 8h | 960 |
| 39 | 2.8.3 | 制定风险登记册 | manual | 1d | 2020-04-02 | 2020-04-02 | 38 | 于旭东 | 8h | 960 |
| 40 | 2.9 | 规划整合 | manual | 1d | 2020-04-03 | 2020-04-03 | 39 | 于旭东 | 8h | 960 |
| 41 | 3 | **执行与监控** |  | 33d | 2020-04-04 | 2020-05-19 |  | 间接成本 [0.1%]; 储备 [0.1%] | 392h | 32,560 |
| 42 | 3.1 | 组建项目团队 | manual | 1d | 2020-04-06 | 2020-04-06 | 7 | 于旭东 | 8h | 960 |
| 43 | 3.2 | **项目执行** |  | 21d | 2020-04-06 | 2020-05-04 |  |  | 192h | 9,600 |
| 44 | 3.2.1 | **用户模块** |  | 21d | 2020-04-06 | 2020-05-04 |  |  | 192h | 9,600 |
| 45 | 3.2.1.1 | 注册登录 | manual | 2d | 2020-04-06 | 2020-04-07 | 42 | 程序员1 | 16h | 800 |
| 46 | 3.2.1.2 | **首页** |  | 4d | 2020-04-07 | 2020-04-10 | 45 |  | 32h | 1,600 |
| 47 | 3.2.1.2.1 | 显示热门电影 | manual | 2d | 2020-04-07 | 2020-04-08 |  | 程序员2 | 16h | 800 |
| 48 | 3.2.1.2.2 | 显示热门城市 | manual | 1d | 2020-04-09 | 2020-04-09 |  | 程序员2 | 8h | 400 |
| 49 | 3.2.1.2.3 | 搜索相关内容 | manual | 1d | 2020-04-10 | 2020-04-10 | 47, 48 | 程序员2 | 8h | 400 |

| ID | WBS | Task | Type | Duration | Start | Finish | Predecessors | Resources | Work | Cost |
| --- | --- | --- | --- | --- | --- | --- | --- | --- | --- | --- |
| 50 | 3.2.1.3 | **影视** |  | 3d | 2020-04-13 | 2020-04-15 | 45 |  | 24h | 1,200 |
| 51 | 3.2.1.3.1 | 显示影视分类 | manual | 1d | 2020-04-13 | 2020-04-13 |  | 程序员3 | 8h | 400 |
| 52 | 3.2.1.3.2 | 显示热门影视 | manual | 1d | 2020-04-14 | 2020-04-14 |  | 程序员3 | 8h | 400 |
| 53 | 3.2.1.3.3 | 显示影视主题 | manual | 1d | 2020-04-15 | 2020-04-15 |  | 程序员3 | 8h | 400 |
| 54 | 3.2.1.4 | **城市** |  | 2d | 2020-04-16 | 2020-04-17 | 45 |  | 16h | 800 |
| 55 | 3.2.1.4.1 | 显示城市地区分类 | manual | 1d | 2020-04-16 | 2020-04-16 |  | 程序员1 | 8h | 400 |
| 56 | 3.2.1.4.2 | 显示热门城市 | manual | 1d | 2020-04-17 | 2020-04-17 |  | 程序员1 | 8h | 400 |
| 57 | 3.2.1.5 | **论坛** |  | 5d | 2020-04-20 | 2020-04-24 | 45 |  | 40h | 2,000 |
| 58 | 3.2.1.5.1 | 发布帖子 | manual | 1d | 2020-04-20 | 2020-04-20 |  | 程序员2 | 8h | 400 |
| 59 | 3.2.1.5.2 | 显示我发出的帖子 | manual | 1d | 2020-04-21 | 2020-04-21 | 58 | 程序员2 | 8h | 400 |
| 60 | 3.2.1.5.3 | 编辑帖子 | manual | 1d | 2020-04-22 | 2020-04-22 | 59 | 程序员2 | 8h | 400 |
| 61 | 3.2.1.5.4 | 查看其他用户的帖子 | manual | 1d | 2020-04-23 | 2020-04-23 |  | 程序员2 | 8h | 400 |
| 62 | 3.2.1.5.5 | 转发、点赞、评论帖子 | manual | 1d | 2020-04-24 | 2020-04-24 | 61 | 程序员2 | 8h | 400 |
| 63 | 3.2.1.6 | **个人** |  | 4d | 2020-04-27 | 2020-04-30 | 45 |  | 64h | 3,200 |
| 64 | 3.2.1.6.1 | 显示我的路线 | manual | 1d | 2020-04-27 | 2020-04-27 |  | 程序员3 | 8h | 400 |
| 65 | 3.2.1.6.2 | 显示我的电影 | manual | 1d | 2020-04-27 | 2020-04-27 |  | 程序员2 | 8h | 400 |
| 66 | 3.2.1.6.3 | 显示我的城市 | manual | 1d | 2020-04-27 | 2020-04-27 |  | 程序员1 | 8h | 400 |
| 67 | 3.2.1.6.4 | 显示我的场记 | manual | 1d | 2020-04-28 | 2020-04-28 |  | 程序员3 | 8h | 400 |
| 68 | 3.2.1.6.5 | 编辑资料 | manual | 1d | 2020-04-28 | 2020-04-28 |  | 程序员2 | 8h | 400 |
| 69 | 3.2.1.6.6 | 签到领积分 | manual | 1d | 2020-04-28 | 2020-04-28 |  | 程序员1 | 8h | 400 |
| 70 | 3.2.1.6.7 | 显示积分排行榜 | manual | 1d | 2020-04-29 | 2020-04-29 | 69 | 程序员3 | 8h | 400 |
| 71 | 3.2.1.6.8 | 设置 | manual | 1d | 2020-04-30 | 2020-04-30 |  | 程序员3 | 8h | 400 |
| 72 | 3.3 | **项目监控** |  | 5d | 2020-04-27 | 2020-05-01 |  |  | 96h | 8,160 |
| 73 | 3.3.1 | 各项指标监控 | manual | 1d | 2020-04-27 | 2020-04-27 | 42 | 范钰敏; 于旭东 | 16h | 1,440 |
| 74 | 3.3.2 | 监控评审 | manual | 1d | 2020-04-28 | 2020-04-28 | 73 | 设计专家; 于旭东 | 16h | 1,600 |
| 75 | 3.3.3 | 变更评审 | manual | 2d | 2020-04-29 | 2020-04-30 | 74 | 设计专家; 于旭东 | 32h | 3,200 |
| 76 | 3.3.4 | 例会 | manual | 2d | 2020-04-30 | 2020-05-01 | 42 | 王予诺; 范钰敏 | 32h | 1,920 |

| ID | WBS | Task | Type | Duration | Start | Finish | Predecessors | Resources | Work | Cost |
| --- | --- | --- | --- | --- | --- | --- | --- | --- | --- | --- |
| 77 | 3.4 | **管理干系人** |  | 3d | 2020-05-01 | 2020-05-05 |  |  | 24h | 2,880 |
| 78 | 3.4.1 | 发布项目信息 | manual | 1d | 2020-05-01 | 2020-05-01 | 42 | 于旭东 | 8h | 960 |
| 79 | 3.4.2 | 报告监控指标 | manual | 1d | 2020-05-04 | 2020-05-04 | 42 | 于旭东 | 8h | 960 |
| 80 | 3.4.3 | 干系人沟通 | manual | 1d | 2020-05-05 | 2020-05-05 | 42 | 于旭东 | 8h | 960 |
| 81 | 3.5 | **团队建设** |  | 3d | 2020-05-06 | 2020-05-08 |  |  | 48h | 2,880 |
| 82 | 3.5.1 | 培训 | manual | 1d | 2020-05-06 | 2020-05-06 | 42 | 王予诺; 范钰敏 | 16h | 960 |
| 83 | 3.5.2 | 娱乐活动 | manual | 1d | 2020-05-07 | 2020-05-07 | 42 | 王予诺; 范钰敏 | 16h | 960 |
| 84 | 3.5.3 | 沟通 | manual | 1d | 2020-05-08 | 2020-05-08 | 42 | 王予诺; 范钰敏 | 16h | 960 |
| 85 | 3.6 | 采购 | manual | 1d | 2020-05-08 | 2020-05-08 | 42 | 于旭东 | 8h | 960 |
| 86 | 3.7 | 项目验收 | manual | 1d | 2020-05-11 | 2020-05-11 | 43 | 王予诺; 设计专家 | 16h | 1,120 |
| 87 | 4 | **收尾** |  | 2d | 2020-06-01 | 2020-06-02 |  | 间接成本 [0.1%]; 储备 [0.1%] | 40h | 4,040 |
| 88 | 4.1 | 项目终验 | manual | 1d | 2020-06-01 | 2020-06-01 | 86 | 王予诺; 设计专家 | 16h | 1,120 |
| 89 | 4.2 | 结束采购 | manual | 1d | 2020-06-01 | 2020-06-01 | 86 | 于旭东 | 8h | 960 |
| 90 | 4.3 | 项目内部收尾 | manual | 1d | 2020-06-02 | 2020-06-02 | 86 | 王予诺; 范钰敏 | 16h | 960 |
